# Cloud Privé avec OpenStack

Schedule from MS Project, 2012-11-12 to 2013-02-01.

## Calendars

- Standard: Mon-Fri 08:00-12:00, 13:00-17:00; Sat-Sun off.

## Resources

| Resource |
| --- |
| Julien Brun |
| Maxime Mouchet |

## Schedule

| ID | WBS | Task | Duration | Start | Finish | Predecessors | Total slack | Free slack | Constraint | Resources | Work |
| --- | --- | --- | --- | --- | --- | --- | --- | --- | --- | --- | --- |
| 1 | 1 | **Préparation** | 7d | 2012-11-12 | 2012-11-20 |  | 8d | 0d |  |  | 112h |
| 2 | 1.1 | Dimensionnement | 7d | 2012-11-12 | 2012-11-20 |  | 8d |  | start no earlier than 2012-11-12 | Maxime Mouchet; Julien Brun | 112h |
| 3 | 2 | **Installation d'OpenStack** | 16d | 2012-11-21 | 2012-12-12 | 1 | 8d | 0d |  |  | 192h |
| 4 | 2.1 | Installation de Keystone | 4d | 2012-11-21 | 2012-11-26 |  | 8d | 0d | start no earlier than 2012-11-21 | Julien Brun | 32h |
| 5 | 2.2 | Préparation à l'installation de Nova | 4d | 2012-11-21 | 2012-11-26 |  | 22d | 0d | start no earlier than 2012-11-21 | Maxime Mouchet | 32h |
| 6 | 2.3 | Installation de Glance | 4d | 2012-11-27 | 2012-11-30 | 4 | 22d | 4d | start no earlier than 2012-11-19 | Julien Brun | 32h |
| 7 | 2.4 | Installation de Nova | 4d | 2012-11-27 | 2012-11-30 | 5, 4 | 22d | 4d |  | Maxime Mouchet | 32h |
| 8 | 2.5 | Installation de Swift | 4d | 2012-12-03 | 2012-12-06 | 4 | 18d | 0d | start no earlier than 2012-12-03 | Maxime Mouchet | 32h |
| 9 | 2.6 | Installation du Dashboard | 4d | 2012-12-07 | 2012-12-12 | 6, 4, 7, 8 | 18d |  |  | Julien Brun | 32h |
| 10 | 3 | **Mise en place de Puppet** | 11d | 2012-12-13 | 2012-12-27 | 3 | 18d | 0d |  |  | 88h |
| 11 | 3.1 | Installation de Puppet | 7d | 2012-12-13 | 2012-12-21 | 1 | 18d | 0d |  | Julien Brun | 56h |
| 12 | 3.2 | Stockage des configurations Puppet sur un dépot Git | 4d | 2012-12-24 | 2012-12-27 | 11 | 19d |  | start no earlier than 2012-12-24 | Julien Brun | 32h |
| 13 | 4 | **Personnalisation du Cloud** | 38d | 2012-12-03 | 2013-01-23 | 1 | 0d |  |  |  | 328h |
| 14 | 4.1 | Création des images | 5d | 2012-12-26 | 2013-01-01 | 11 | 16d |  | start no earlier than 2012-12-26 | Maxime Mouchet | 40h |
| 15 | 4.2 | Création d'un serveur LDAP de test | 4d | 2012-12-03 | 2012-12-06 |  | 30d | 9d | start no earlier than 2012-12-03 | Julien Brun | 32h |
| 16 | 4.3 | Mise en place d'une authentification via le LDAP | 4d | 2012-12-20 | 2012-12-25 | 15, 3 | 21d |  | start no earlier than 2012-12-20 | Maxime Mouchet | 32h |
| 17 | 4.4 | Développement d'une interface de création de configurations | 20d | 2012-12-07 | 2013-01-23 | 4 | 0d |  | start no earlier than 2012-12-07 | Julien Brun; Maxime Mouchet | 224h |
| 18 | 5 | **Tests** | 37d | 2012-12-13 | 2013-02-01 |  | 0d |  |  |  | 192h |
| 20 | 5.1 | Test de l'installation d'OpenStack | 5d | 2012-12-13 | 2012-12-19 | 3 | 32d |  | start no earlier than 2012-12-13 | Maxime Mouchet | 40h |
| 21 | 5.2 | Test du fonctionnement de Puppet | 5d | 2012-12-28 | 2013-01-03 | 10 | 21d |  | start no earlier than 2012-12-28 | Julien Brun | 40h |
| 22 | 5.3 | Test du Cloud | 7d | 2013-01-24 | 2013-02-01 | 3, 10, 13 | 0d |  | start no earlier than 2013-01-17 | Julien Brun; Maxime Mouchet | 112h |
